Schedule from MS Project, 2024-04-20 to 2024-06-05, A marks actual dates.

## Calendars

- Standard: Mon-Fri 08:00-12:00, 13:00-17:00; Sat-Sun off.

## Resources

| Resource |
| --- |
| Alfredo |
| Eric |
| Héctor |
| Lorena |
| Kari |
| Max |
| Benjamin |
| Joahan |
| Bernardo |
| José Antonio |
| JA |
| Bebe |
| LA |

## Schedule

| ID | WBS | Task | Type | Duration | Start | Finish | Complete | Remaining | Total slack | Resources | Work | Actual work | In Charge |
| --- | --- | --- | --- | --- | --- | --- | --- | --- | --- | --- | --- | --- | --- |
| 1 | 1 | **Sprint 100%** |  | 33d | 2024-04-20 A | 2024-06-05 | 99% | 0.06d | 0d |  | 22040.7h | 19066.1h |  |
| 2 | 1.1 | **El IVR recibe la llamada, identifica al cliente gracias a su número telefónico, busca en la base de datos de clientes su nombre y con esta información saluda al cliente por su nombre y le da la bienvenida.** |  | 25d | 2024-05-01 A | 2024-06-04 A | 100% |  |  | Héctor | 1880h | 1880h | RI-01 |
| 3 | 1.1.1 | **Amazon Connect está habilitado para recibir llamadas.** |  | 25d | 2024-05-01 A | 2024-06-04 A | 100% |  |  | Héctor | 416h | 416h |  |
| 4 | 1.1.1.1 | La instancia cuenta con un número de teléfono de México asignado | manual | 2d | 2024-05-01 A | 2024-05-02 A | 100% |  |  | Héctor | 16h | 16h |  |
| 5 | 1.1.1.2 | La instancia cuenta con los flujos necesarios definidos para contestar llamadas. | manual | 13d | 2024-05-03 A | 2024-05-21 A | 100% |  |  | Héctor | 104h | 104h |  |
| 6 | 1.1.1.3 | La instancia cuenta con “queues” definidos para el enrutamiento de clientes. | manual | 12d | 2024-05-20 A | 2024-06-04 A | 100% |  |  | Héctor | 96h | 96h |  |
| 7 | 1.1.2 | **El flujo de primer contacto en Connect está implementado y como primer paso dice lo siguiente"Por favor diga su nombre y su número de contrato".** |  | 13d | 2024-05-06 A | 2024-05-22 A | 100% |  |  | Héctor | 304h | 304h |  |
| 8 | 1.1.2.1 | Se creó un bot en Amazon Lex para poder interactuar con el usuario según distintos casos base. | manual | 12d | 2024-05-06 A | 2024-05-21 A | 100% |  |  | Héctor | 96h | 96h |  |
| 9 | 1.1.2.2 | El flujo tiene integrado el bot creado en Lex que interactúa con el usuario. | manual | 13d | 2024-05-06 A | 2024-05-22 A | 100% |  |  | Héctor | 104h | 104h |  |
| 10 | 1.1.3 | **Connect transforma la respuesta del cliente en texto y manda la información al agente próximo a atender al cliente.** |  | 16d | 2024-05-01 A | 2024-05-22 A | 100% |  |  | Héctor | 536h | 536h |  |
| 11 | 1.1.3.1 | Lambda de voz del cliente a texto | manual | 11d | 2024-05-07 A | 2024-05-21 A | 100% |  |  | Héctor | 88h | 88h |  |
| 12 | 1.1.3.2 | Las tablas correspondientes para la implementación de esta funcionalidad se encuentran codificadas | manual | 14d | 2024-05-01 A | 2024-05-18 A | 100% |  |  | Héctor | 112h | 112h |  |
| 13 | 1.1.3.3 | La información en texto plano se manda a la base de datos | manual | 10d | 2024-05-07 A | 2024-05-20 A | 100% |  |  | Héctor | 80h | 80h |  |
| 14 | 1.1.3.4 | La interfaz de usuario del agente es capaz de mostrar estos datos en pantalla | manual | 16d | 2024-05-01 A | 2024-05-22 A | 100% |  |  | Héctor | 128h | 128h |  |
| 15 | 1.1.4 | **El sistema busca en el registro de la base de datos los datos del cliente.** |  | 15d | 2024-05-06 A | 2024-05-24 A | 100% |  |  | Héctor | 424h | 424h |  |
| 16 | 1.1.4.1 | Están implementados las rutas necesarios para realizar las consultas | manual | 15d | 2024-05-06 A | 2024-05-24 A | 100% |  |  | Héctor | 120h | 120h |  |
| 17 | 1.1.4.2 | El backEnd de la aplicación de agentes tiene conexión exitosa con la base de datos. | manual | 11d | 2024-05-08 A | 2024-05-22 A | 100% |  |  | Héctor | 88h | 88h |  |
| 18 | 1.1.4.3 | La respuesta del servidor es exitosa y se obtienen los datos. | manual | 12d | 2024-05-08 A | 2024-05-23 A | 100% |  |  | Héctor | 96h | 96h |  |
| 19 | 1.2 | **El IVR pregunta "¿qué problema tiene?", convierte a texto la respuesta de la persona.** |  | 24d | 2024-04-24 A | 2024-05-27 A | 100% |  |  | Lorena | 824h | 824h | RI-02 |
| 20 | 1.2.1 | **El IVR detecta la voz de la persona** |  | 18d | 2024-04-24 A | 2024-05-18 A | 100% |  |  | Lorena | 368h | 368h |  |
| 21 | 1.2.1.1 | Investigación y selección de tecnologías de reconocimiento de voz compatibles con Amazon Connect. | manual | 6d | 2024-04-24 A | 2024-05-01 A | 100% |  |  | Lorena | 48h | 48h |  |
| 22 | 1.2.1.2 | Configuración de los servicios de reconocimiento de voz en Amazon Connect. | manual | 11d | 2024-05-06 A | 2024-05-18 A | 100% |  |  | Lorena | 88h | 88h |  |
| 23 | 1.2.1.3 | Desarrollo del flujo del IVR incluyendo la pregunta “¿qué problema tiene? | manual | 11d | 2024-05-06 A | 2024-05-18 A | 100% |  |  | Lorena | 88h | 88h |  |
| 24 | 1.2.2 | **El IVR transcribe las respuestas del cliente a texto** |  | 16d | 2024-05-06 A | 2024-05-27 A | 100% |  |  | Lorena | 264h | 264h |  |
| 25 | 1.2.2.1 | Integración de la transcripción de voz a texto en el flujo del IVR. | manual | 14d | 2024-05-06 A | 2024-05-23 A | 100% |  |  | Lorena | 112h | 112h |  |
| 26 | 1.2.2.2 | El sistema recibe la transcripción | manual | 3d | 2024-05-23 A | 2024-05-27 A | 100% |  |  | Lorena | 24h | 24h |  |

| ID | WBS | Task | Type | Duration | Start | Finish | Complete | Remaining | Total slack | Resources | Work | Actual work | In Charge |
| --- | --- | --- | --- | --- | --- | --- | --- | --- | --- | --- | --- | --- | --- |
| 27 | 1.3 | **El IVR transfiere los datos obtenidos, las alerta al agente de una llamada entrante. Transfiere la llamada y empieza el registrar de proceso completo de comunicación.** |  | 19d | 2024-05-01 A | 2024-05-27 A | 100% |  |  | Kari | 1272h | 1272h | RI-04 |
| 28 | 1.3.1 | **Las llamadas se responden con un IVR que realiza preguntas al usuario.** |  | 11d | 2024-05-06 A | 2024-05-20 A | 100% |  |  | Kari | 296h | 296h |  |
| 29 | 1.3.1.1 | Creación del formulario inicial. 1 dia | manual | 10d | 2024-05-06 A | 2024-05-17 A | 100% |  |  | Kari | 80h | 80h |  |
| 30 | 1.3.1.2 | Habilitación de llamadas en Amazon Connect.3 dias | manual | 11d | 2024-05-06 A | 2024-05-18 A | 100% |  |  | Kari | 88h | 88h |  |
| 31 | 1.3.1.3 | Pasar los datos al sistema | manual | 5d | 2024-05-14 A | 2024-05-20 A | 100% |  |  | Kari | 40h | 40h |  |
| 32 | 1.3.2 | **Al recibir la llamada y recopilar los datos se envía una alerta de llamada al agente.** |  | 14d | 2024-05-01 A | 2024-05-20 A | 100% |  |  | Kari | 296h | 296h |  |
| 33 | 1.3.2.1 | Creación de componente que contenga los datos recopilados por el IVR. 1 día | manual | 14d | 2024-05-01 A | 2024-05-20 A | 100% |  |  | Kari | 112h | 112h |  |
| 34 | 1.3.2.2 | Implementación de alerta para el agente. 2 dias | manual | 9d | 2024-05-01 A | 2024-05-13 A | 100% |  |  | Kari | 72h | 72h |  |
| 35 | 1.3.3 | **El IVR transfiere la llamada al agente.** |  | 11d | 2024-05-13 A | 2024-05-27 A | 100% |  |  | Kari | 160h | 160h |  |
| 36 | 1.3.3.1 | Implementación de llamadas para agentes con Amazon Connect. 3 días | manual | 3d | 2024-05-13 A | 2024-05-15 A | 100% |  |  | Kari | 24h | 24h |  |
| 37 | 1.3.3.2 | Transfiere los datos que están en una llamada a un agente. 3 dias | manual | 6d | 2024-05-20 A | 2024-05-27 A | 100% |  |  | Kari | 48h | 48h |  |
| 38 | 1.3.4 | **Al agente se le despliega la ventana de llamada con los datos obtenidos.** |  | 15d | 2024-05-01 A | 2024-05-21 A | 100% |  |  | Kari | 368h | 368h |  |
| 39 | 1.3.4.1 | Hacer conexión con la base de datos. 1 día | manual | 8d | 2024-05-09 A | 2024-05-18 A | 100% |  |  | Kari | 64h | 64h |  |
| 40 | 1.3.4.2 | Jalar la información de la BD. | manual | 8d | 2024-05-09 A | 2024-05-18 A | 100% |  |  | Kari | 64h | 64h |  |
| 41 | 1.3.4.3 | Utilizando el componente de datos desplegar en la interfaz la información mediante el objeto reusable. | manual | 15d | 2024-05-01 A | 2024-05-21 A | 100% |  |  | Kari | 120h | 120h |  |
| 42 | 1.4 | **El agente recibe la llamada y en pantalla le aparecen los datos cliente que son: Nombre, celular, paquetes, zona, dirección, problema, No de contrato, correo electronico. A partir de esto el Agente hace una verificación del ID del paquete que tenga contra** |  | 23d | 2024-05-01 A | 2024-05-31 A | 100% |  |  | Max | 720h | 720h | RA-01 |
| 43 | 1.4.1 | **El sistema del agente recibe la llamada del cliente** |  | 4d | 2024-05-08 A | 2024-05-13 A | 100% |  |  | Max | 64h | 64h |  |
| 44 | 1.4.1.1 | Con ayuda del IVR, se conecta la llamada del cliente con el sistema del agente | manual | 4d | 2024-05-08 A | 2024-05-13 A | 100% |  |  | Max | 32h | 32h |  |
| 45 | 1.4.2 | **El sistema despliega toda la información del cliente para que el agente pueda verificar el paquete de contrato que tenga el cliente** |  | 23d | 2024-05-01 A | 2024-05-31 A | 100% |  |  | Max | 472h | 472h |  |
| 46 | 1.4.2.1 | Recibe información del IVR | manual | 7d | 2024-05-15 A | 2024-05-23 A | 100% |  |  | Max | 56h | 56h |  |
| 47 | 1.4.2.2 | Se crean los componentes necesarios para mostrar la información del cliente que el IVR recopiló. (2 día) | manual | 22d | 2024-05-01 A | 2024-05-30 A | 100% |  |  | Max | 176h | 176h |  |
| 48 | 1.4.2.3 | Se muestra la info en los componentes | manual | 7d | 2024-05-23 A | 2024-05-31 A | 100% |  |  | Max | 56h | 56h |  |
| 49 | 1.5 | **Cuando el análisis emocional llega a niveles críticos, se prende una alerta al supervisor y le da la opción de intervenir.** |  | 16d | 2024-05-15 A | 2024-06-05 | 99% | 0d | 0d | Benjamin | 438h | 281.5h | RE-01 |
| 50 | 1.5.1 | **Se implementa en el sistema un análisis emocional:** |  | 6d | 2024-05-22 A | 2024-05-29 A | 100% |  |  | Benjamin | 144h | 144h |  |
| 51 | 1.5.1.1 | Conexión con Amazon Connect | manual | 6d | 2024-05-22 A | 2024-05-29 A | 100% |  |  | Benjamin | 48h | 48h |  |
| 52 | 1.5.1.2 | Contact Lens | manual | 6d | 2024-05-22 A | 2024-05-29 A | 100% |  |  | Benjamin | 48h | 48h |  |

| ID | WBS | Task | Type | Duration | Start | Finish | Complete | Remaining | Total slack | Resources | Work | Actual work | In Charge |
| --- | --- | --- | --- | --- | --- | --- | --- | --- | --- | --- | --- | --- | --- |
| 53 | 1.5.2 | **El sistema puede catalogar sólo si la respuesta propuesta es positiva, negativa o neutral:** |  | 16d | 2024-05-15 A | 2024-06-05 | 99% | 0d | 0d | Benjamin | 166h | 137.5h |  |
| 54 | 1.5.2.1 | Mandar información a la BD | manual | 13d | 2024-05-15 A | 2024-05-31 A | 100% |  |  | Benjamin | 104h | 104h |  |
| 55 | 1.5.2.2 | Mandar alerta al supervisor | manual | 3d | 2024-06-03 A | 2024-06-05 A | 100% |  |  | Benjamin | 24h | 24h |  |
| 56 | 1.6 | **Cuando el cliente termine la llamada, se guardará un registro de la llamada y lo guardará en la Base de Datos.** |  | 19d | 2024-05-07 A | 2024-05-31 A | 100% |  |  | Joahan | 489.07h | 489.07h | RST-02 |
| 57 | 1.6.1 | **En la pantalla se muestra datos a guardar del cliente** |  | 9d | 2024-05-07 A | 2024-05-17 A | 100% |  |  | Joahan | 152h | 152h |  |
| 58 | 1.6.1.1 | En la pantalla se ve el botón de terminar llamada 1 día | manual | 7d | 2024-05-07 A | 2024-05-15 A | 100% |  |  | Joahan | 56h | 56h |  |
| 59 | 1.6.1.2 | En la pantalla se muestran los datos y características de la llamada del cliente 2 días | manual | 3d | 2024-05-15 A | 2024-05-17 A | 100% |  |  | Joahan | 24h | 24h |  |
| 60 | 1.6.2 | **Confirmación en pantalla de registro en la base de datos exitoso** |  | 12d | 2024-05-16 A | 2024-05-31 A | 100% |  |  | Joahan | 192h | 192h |  |
| 61 | 1.6.2.1 | Los datos son enviados a la base de datos y se registran correctamente 3 días | manual | 12d | 2024-05-16 A | 2024-05-31 A | 100% |  |  | Joahan | 96h | 96h |  |
| 62 | 1.7 | **En la pantalla del Supervisor se tendrá una sección para visualizar las incidencias que se presentan, el Supervisor podrá identificar la zona afectada por el incidente y mandar un mensaje sobre la situación que se presenta.** |  | 23d | 2024-05-01 A | 2024-05-31 A | 100% |  |  | Alfredo | 904h | 904h | RS-01 |
| 63 | 1.7.1 | **El Supervisor cuenta con una pantalla para la visualización de las incidencias.** |  | 14d | 2024-05-01 A | 2024-05-20 A | 100% |  |  | Alfredo | 400h | 400h |  |
| 64 | 1.7.1.1 | Se diseñará una interfaz en el FrontEnd utilizando React para visualizar las incidencias reportadas. (1 día) | manual | 13d | 2024-05-01 A | 2024-05-17 A | 100% |  |  | Alfredo | 104h | 104h |  |
| 65 | 1.7.1.2 | Para obtener los datos, se diseñan las tablas necesarias para almacenar las incidencias. (1 día) | manual | 14d | 2024-05-01 A | 2024-05-18 A | 100% |  |  | Alfredo | 112h | 112h |  |
| 66 | 1.7.1.3 | Con el BackEnd se realiza la extracción de datos sobre las incidencias reportadas y se presentan en el FrontEnd. (2 días) | manual | 9d | 2024-05-08 A | 2024-05-20 A | 100% |  |  | Alfredo | 72h | 72h |  |
| 67 | 1.7.2 | **El Supervisor puede redactar un SMS a los clientes de cierta zona, comunicándoles el problema extemporáneo con su servicio.** |  | 18d | 2024-05-08 A | 2024-05-31 A | 100% |  |  | Alfredo | 320h | 320h |  |
| 68 | 1.7.2.1 | Se diseñará una interfaz en el FrontEnd utilizando React para poder redactar los diferentes SMS. (1 día) | manual | 9d | 2024-05-08 A | 2024-05-18 A | 100% |  |  | Alfredo | 72h | 72h |  |
| 69 | 1.7.2.2 | Con la ayuda del BackEnd y la Base de Datos, se obtiene a todos los clientes que viven dentro de una zona para el envío del SMS. (2 días) | manual | 8d | 2024-05-09 A | 2024-05-19 A | 100% |  |  | Alfredo | 64h | 64h |  |
| 70 | 1.7.2.3 | Mediante Amazon Connect se realiza el envío de SMS a los clientes afectados por el percance. (1 día) | manual | 5d | 2024-05-27 A | 2024-05-31 A | 100% |  |  | Alfredo | 40h | 40h |  |
| 71 | 1.8 | **El sistema le manda mensaje a todos los usuarios de una zona que ha habido un problema pero estamos trabajando en eso.** |  | 23d | 2024-05-01 A | 2024-05-31 | 99% | 0d |  | Héctor | 944h | 728h | RST-03 |
| 72 | 1.8.1 | **El administrador verá en su pantalla las diferentes incidencias reportadas en forma similar a la de un buzón de email.** |  | 20d | 2024-05-01 A | 2024-05-28 | 99% | 0d | 0d | Héctor | 312h | 256h |  |
| 73 | 1.8.1.1 | Las tablas necesarias para la implementación de la funcionalidad están codificadas. (2 días) | manual | 13d | 2024-05-01 A | 2024-05-17 A | 100% |  |  | Héctor | 104h | 104h |  |
| 74 | 1.8.1.2 | La conexión con la base de datos es exitosa. (1 día) | manual | 3d | 2024-05-22 A | 2024-05-24 A | 100% |  |  | Héctor | 24h | 24h |  |
| 75 | 1.8.1.3 | Las incidencias aparecen en esta bandeja de entrada de incidencias del supervisor. (2-3 días) | manual | 3d | 2024-05-24 A | 2024-05-28 A | 100% |  |  | Héctor | 24h | 24h |  |
| 76 | 1.8.2 | **Las incidencias tendran dos botones para escribir y borrar** |  | 23d | 2024-05-01 A | 2024-05-31 | 99% | 0d | 0d | Héctor | 448h | 368h |  |
| 77 | 1.8.2.1 | Se crea un mensaje o se borra | manual | 9d | 2024-05-20 A | 2024-05-30 A | 100% |  |  | Héctor | 72h | 72h |  |
| 78 | 1.8.2.2 | Las tablas necesarias para la implementación de la funcionalidad están codificadas. (2 días) | manual | 13d | 2024-05-01 A | 2024-05-17 A | 100% |  |  | Héctor | 104h | 104h |  |
| 79 | 1.8.2.3 | La conexión con la base de datos es exitosa. (1 día) | manual | 5d | 2024-05-20 A | 2024-05-24 A | 100% |  |  | Héctor | 40h | 40h |  |
| 80 | 1.8.2.4 | El cambio de estado de la incidencia se ve reflejado en la base de datos. (1 día) | manual | 6d | 2024-05-24 A | 2024-05-31 A | 100% |  |  | Héctor | 48h | 48h |  |

| ID | WBS | Task | Type | Duration | Start | Finish | Complete | Remaining | Total slack | Resources | Work | Actual work | In Charge |
| --- | --- | --- | --- | --- | --- | --- | --- | --- | --- | --- | --- | --- | --- |
| 81 | 1.9 | **La pantalla de supervisor permite ver a todos los agentes al mismo tiempo.** |  | 32d | 2024-04-22 A | 2024-06-04 A | 100% |  |  | Bernardo | 1656h | 1656h | RS-03 |
| 82 | 1.9.1 | **Del lado izquierdo de la pantalla se visualiza una serie de recuadros en forma de tarjeta.** |  | 20d | 2024-04-22 A | 2024-05-17 A | 100% |  |  | Bernardo | 480h | 480h |  |
| 83 | 1.9.1.1 | Se implementará del lado del frontEnd el componente reusable tarjeta. (1 día) | manual | 20d | 2024-04-22 A | 2024-05-17 A | 100% |  |  | Bernardo | 160h | 160h |  |
| 84 | 1.9.1.2 | Se implementará del lado del frontEnd en contenedor de todos los componentes tarjeta. (1 día) | manual | 20d | 2024-04-22 A | 2024-05-17 A | 100% |  |  | Bernardo | 160h | 160h |  |
| 85 | 1.9.2 | **Las tarjetas cambiarán de color dependiendo del estado de la llamada** |  | 8d | 2024-05-23 A | 2024-06-03 A | 100% |  |  | Bernardo | 128h | 128h |  |
| 86 | 1.9.2.1 | El backEnd de la aplicación hace uso del API necesario para obtener datos precisos del análisis de sentimientos. (2 días) | manual | 6d | 2024-05-23 A | 2024-05-30 A | 100% |  |  | Bernardo | 48h | 48h |  |
| 87 | 1.9.2.2 | Gracias a los datos recibidos del backEnd, se programa el en frontEnd la funcionalidad de cambiar los colores individuales de cada tarjeta. (1 día) | manual | 2d | 2024-05-31 A | 2024-06-03 A | 100% |  |  | Bernardo | 16h | 16h |  |
| 88 | 1.9.3 | **Las tarjetas mostrarán información crítica de la llamada en curso** |  | 25d | 2024-05-01 A | 2024-06-04 A | 100% |  |  | Bernardo | 376h | 376h |  |
| 89 | 1.9.3.1 | Las tablas necesarias para la implementación de la funcionalidad están implementadas. (2 días) | manual | 13d | 2024-05-01 A | 2024-05-17 A | 100% |  |  | Bernardo | 104h | 104h |  |
| 90 | 1.9.3.2 | El backEnd de la aplicación pide los datos necesarios a la base de datos. (1 día) | manual | 3d | 2024-05-29 A | 2024-05-31 A | 100% |  |  | Bernardo | 24h | 24h |  |
| 91 | 1.9.3.3 | El backEnd de la aplicación pide los datos necesarios de Connect. (1 día) | manual | 3d | 2024-05-29 A | 2024-05-31 A | 100% |  |  | Bernardo | 24h | 24h |  |
| 92 | 1.9.3.4 | Los datos se muestran en cada una de las tarjetas. (1 día) | manual | 3d | 2024-05-31 A | 2024-06-04 A | 100% |  |  | Bernardo | 24h | 24h |  |
| 93 | 1.9.4 | **Las tarjetas tendrán incluidos dos botones para poder intervenir en la llamada y ver detalles puntuales sobre la misma** |  | 28d | 2024-04-24 A | 2024-05-31 A | 100% |  |  | Bernardo | 416h | 416h |  |
| 94 | 1.9.4.1 | Se diseñará del lado del frontEnd los dos botones dentro del componente tarjeta. (1 día) | manual | 18d | 2024-04-24 A | 2024-05-17 A | 100% |  |  | Bernardo | 144h | 144h |  |
| 95 | 1.9.4.2 | El backEnd de la aplicación hace uso del API necesario para poder intervenir en la llamada y finalizarla. (2 días) | manual | 6d | 2024-05-24 A | 2024-05-31 A | 100% |  |  | Bernardo | 48h | 48h |  |
| 96 | 1.10 | **El supervisor podrá ver el estado de todas las llamadas: estado emocional, duración, problema detectado hasta el momento y los datos del cliente.** |  | 30d | 2024-04-20 A | 2024-06-01 | 99% | 0d | 0d | Héctor | 840h | 520h | RS-04 |
| 97 | 1.10.1 | **El supervisor verá en pantalla a detalle el estado de cada una de las llamadas así como datos importantes de la misma al dar click en cualquiera de las tarjetas de colores que representan las llamadas** |  | 30d | 2024-04-20 A | 2024-06-01 | 99% | 0d | 0d | Héctor | 680h | 520h |  |
| 98 | 1.10.1.1 | En el frontEnd se programa la funcionalidad de lanzar un pop up con el detalle de la llamada cada vez que se le de click a una tarjeta. (1 día) | manual | 18d | 2024-04-24 A | 2024-05-17 A | 100% |  |  | Héctor | 144h | 144h |  |
| 99 | 1.10.1.2 | Las tablas necesarias para la implementación de la funcionalidad están implementadas. (2 días) | manual | 11d | 2024-05-01 A | 2024-05-15 A | 100% |  |  | Héctor | 88h | 88h |  |
| 100 | 1.10.1.3 | El backEnd de la aplicación pide los datos necesarios a la base de datos. (1 día) | manual | 4d | 2024-05-15 A | 2024-05-19 A | 100% |  |  | Héctor | 32h | 32h |  |
| 101 | 1.10.1.4 | Los datos solicitados se muestran en el pop up. (1 día) | manual | 32d | 2024-04-20 A | 2024-06-01 A | 100% |  |  | Héctor | 256h | 256h |  |
| 102 | 1.11 | **El sistema del agente tendrá una ventana con un resumen detallado de la llamada en curso. Se mostrarán detalles en tiempo real como el nombre del agente, el nombre del cliente, el análisis de sentimientos, temporizador de la llamada y duración de la llama** |  | 15d | 2024-05-13 A | 2024-06-01 | 99% | 0d | 0d | Benjamin | 736h | 519.2h | RA-03 |
| 103 | 1.11.1 | **Se despliega una ventana con un resumen detallado de la llamada en curso, que muestra el sentimiento en la llamada actual, cronómetro y el número de llamadas que ha hecho el agente en el día.** |  | 8d | 2024-05-22 A | 2024-06-01 A | 100% |  |  | Benjamin | 136h | 136h |  |
| 104 | 1.11.1.1 | Implementación de sentiment analysis. 3 días | manual | 6d | 2024-05-22 A | 2024-05-29 A | 100% |  |  | Benjamin | 48h | 48h |  |
| 105 | 1.11.1.2 | Despliegue del medidor de sentiment analysis.2 días | manual | 3d | 2024-05-30 A | 2024-06-01 A | 100% |  |  | Benjamin | 24h | 24h |  |

| ID | WBS | Task | Type | Duration | Start | Finish | Complete | Remaining | Total slack | Resources | Work | Actual work | In Charge |
| --- | --- | --- | --- | --- | --- | --- | --- | --- | --- | --- | --- | --- | --- |
| 106 | 1.11.2 | **El cronómetro inicia al momento de iniciar la llamada.** |  | 15d | 2024-05-13 A | 2024-06-01 | 99% | 0d | 0d | Benjamin | 376h | 268h |  |
| 107 | 1.11.2.1 | Implementación de cronómetro que inicie en cuanto entra la llamada. 1 dia | manual | 16d | 2024-05-13 A | 2024-06-01 A | 100% |  |  | Benjamin | 128h | 128h |  |
| 108 | 1.11.2.2 | Despliegue del cronómetro en pantalla.1 día | manual | 16d | 2024-05-13 A | 2024-06-01 A | 100% |  |  | Benjamin | 128h | 128h |  |
| 109 | 1.11.3 | **El número de llamadas en el día se actualiza en tiempo real.** |  | 4d | 2024-05-15 A | 2024-05-20 | 99% | 0d | 0d | Benjamin | 104h | 91.2h |  |
| 110 | 1.11.3.1 | Cuenta ascendente durante el día dependiendo de las llamadas que le hayan entrado al agente. 1 día | manual | 4d | 2024-05-15 A | 2024-05-20 A | 100% |  |  | Benjamin | 32h | 32h |  |
| 111 | 1.11.3.2 | Generación de objeto que nos permita mantener el número de llamadas durante el día entre pantallas. 1 día | manual | 4d | 2024-05-15 A | 2024-05-20 A | 100% |  |  | Benjamin | 32h | 32h |  |
| 112 | 1.11.3.3 | Despliegue del número de llamadas a través de un objeto reusable.1 día | manual | 1d | 2024-05-20 A | 2024-05-20 A | 100% |  |  | Benjamin | 8h | 8h |  |
| 113 | 1.12 | **El sistema del agente tendrá una ventana con un resumen histórico de su desempeño a lo largo de un periodo determinado. Mostrará el tiempo promedio de sus evaluaciones de satifacción, tiempo promedio de llamada, emoción promedio conseguida en sus llamadas** |  | 24d | 2024-05-01 A | 2024-06-03 | 99% | 0d | 0d | Joahan | 767.79h | 628.97h | RA-04 |
| 114 | 1.12.1 | **La pantalla muestra una sección con el desempeño del agente** |  | 16d | 2024-05-01 A | 2024-05-22 A | 100% |  |  | Joahan | 308.73h | 308.73h |  |
| 115 | 1.12.1.1 | Crear una sección especial para desempeño personal 0.5 día | manual | 14d | 2024-05-01 A | 2024-05-20 A | 100% |  |  | Joahan | 112h | 112h |  |
| 116 | 1.12.1.2 | Obtener en información del rendimiento del trabajo del agente 3 días | manual | 3d | 2024-05-15 A | 2024-05-17 A | 100% |  |  | Joahan | 24h | 24h |  |
| 117 | 1.12.1.3 | Llenar la sección con evaluaciones 1 día | manual | 6d | 2024-05-15 A | 2024-05-22 A | 100% |  |  | Joahan | 48h | 48h |  |
| 118 | 1.12.2 | **La pantalla muestra en la sección de desempeño su posición en base a todas las métricas en un ranking de agentes** |  | 14d | 2024-05-15 A | 2024-06-03 | 99% | 0d | 0d | Joahan | 340.4h | 276.4h |  |
| 119 | 1.12.2.1 | Tener en una base de datos las evaluaciones de todos los agentes 1 día | manual | 6d | 2024-05-15 A | 2024-05-22 A | 100% |  |  | Joahan | 48h | 48h |  |
| 120 | 1.12.2.2 | Comparar las evaluaciones entre todos | manual | 14d | 2024-05-15 A | 2024-06-03 A | 100% |  |  | Joahan | 112h | 112h |  |
| 121 | 1.12.2.3 | Obtener su posición y desplegarla en la pantalla 2 días | manual | 13.55d | 2024-05-15 A | 2024-06-03 A | 100% |  |  | Joahan | 116.4h | 116.4h |  |
| 122 | 1.13 | **El sistema del agente tendrá una ventana con datos esenciales del cliente como su nombre, número telefónico, los servicios que tiene contratado al momento, zona de residencia (municipios / alcaldías). *Estado de cuenta (último pago realizado y próximo a r** |  | 16d | 2024-05-01 A | 2024-05-22 A | 100% |  |  | Benjamin | 520h | 520h | RA-05 |
| 123 | 1.13.1 | **El sistema muestra los datos del cliente: nombre, no. telefónico, zona de residencia, servicios contratados y el estado de cuenta:** |  | 16d | 2024-05-01 A | 2024-05-22 A | 100% |  |  | Benjamin | 392h | 392h |  |
| 124 | 1.13.1.1 | Diseñar la interfaz de los datos de los clientes | manual | 15d | 2024-05-01 A | 2024-05-21 A | 100% |  |  | Benjamin | 120h | 120h |  |
| 125 | 1.13.1.2 | Desarrollar la lógica para recuperar los datos de Connect | manual | 6d | 2024-05-15 A | 2024-05-22 A | 100% |  |  | Benjamin | 48h | 48h |  |
| 126 | 1.13.1.3 | Desarrollar la lógica para recuperar los datos del cliente desde la base de datos | manual | 6d | 2024-05-15 A | 2024-05-22 A | 100% |  |  | Benjamin | 48h | 48h |  |
| 127 | 1.13.1.4 | Integrar la lógica de datos en la interfaz de usuario | manual | 6d | 2024-05-15 A | 2024-05-22 A | 100% |  |  | Benjamin | 48h | 48h |  |
| 128 | 1.14 | **El sistema del agente tendrá una ventana que desplieguen las soluciones más frecuentes según el problema presentado, gracias a un sistema tipo buscador en donde el agente ingresará palabras claves para encontrar una solución. Una vez que encuentre la solu** |  | 23d | 2024-05-01 A | 2024-06-02 A | 100% |  |  | Joahan | 704h | 704h | RA-06 |
| 129 | 1.14.1 | **El sistema despliega una ventana con soluciones frecuentes** |  | 17d | 2024-05-01 A | 2024-05-23 A | 100% |  |  | Joahan | 400h | 400h |  |
| 130 | 1.14.1.1 | Se crea un sección especial en la pantalla | manual | 15d | 2024-05-01 A | 2024-05-21 A | 100% |  |  | Joahan | 120h | 120h |  |
| 131 | 1.14.1.2 | Se muestran tarjetas en esta sección | manual | 16d | 2024-05-01 A | 2024-05-22 A | 100% |  |  | Joahan | 128h | 128h |  |
| 132 | 1.14.1.3 | Se muestra información de posibles soluciones en las tarjetas | manual | 2d | 2024-05-22 A | 2024-05-23 A | 100% |  |  | Joahan | 16h | 16h |  |

| ID | WBS | Task | Type | Duration | Start | Finish | Complete | Remaining | Total slack | Resources | Work | Actual work | In Charge |
| --- | --- | --- | --- | --- | --- | --- | --- | --- | --- | --- | --- | --- | --- |
| 133 | 1.14.2 | **Las soluciones frecuentes mostradas son relacionas y filtradas de acuerdo al problema del cliente** |  | 7d | 2024-05-23 A | 2024-06-02 A | 100% |  |  | Joahan | 120h | 120h |  |
| 134 | 1.14.2.1 | Se muestran solo las tarjetas relacionadas al problema | manual | 8d | 2024-05-23 A | 2024-06-02 A | 100% |  |  | Joahan | 64h | 64h |  |
| 135 | 1.15 | **El sistema del agente tendrá una ventana de servicios en donde se mostrará el problema identificado y una casilla para marcar que el problema identificado es técnico** |  | 28d | 2024-04-24 A | 2024-06-02 | 96% | 1.1d | 0d | Lorena | 1093.87h | 736.67h | RA-07 |
| 136 | 1.15.1 | **El sistema de agentes cuenta con una ventana de servicios.** |  | 15d | 2024-05-01 A | 2024-05-21 | 99% | 0d | 0d | Lorena | 288h | 192h |  |
| 137 | 1.15.1.1 | Desarrollar un boceto con el diseño de la ventana de servicios del agente. | manual | 3d | 2024-05-01 A | 2024-05-03 A | 100% |  |  | Lorena | 24h | 24h |  |
| 138 | 1.15.1.2 | Implementar el diseño con React. | manual | 15d | 2024-05-01 A | 2024-05-21 A | 100% |  |  | Lorena | 120h | 120h |  |
| 139 | 1.15.1.3 | Configurar y establecer la conexión con la base de datos para recuperar y almacenar la información necesaria, que incluyen los problemas comunes, soluciones frecuentes y guardar nuevas soluciones. | manual | 3d | 2024-05-15 A | 2024-05-17 A | 100% |  |  | Lorena | 24h | 24h |  |
| 140 | 1.15.2 | **La ventana de servicios muestra el problema identificado.** |  | 5d | 2024-05-15 A | 2024-05-21 A | 100% |  |  | Lorena | 112h | 112h |  |
| 141 | 1.15.2.1 | Obtener los datos del problema identificado desde la BD. | manual | 4d | 2024-05-15 A | 2024-05-19 A | 100% |  |  | Lorena | 32h | 32h |  |
| 142 | 1.15.2.2 | Mostrar las soluciones frecuentes que se tienen disponibles en la BD para el problema identificado. | manual | 5d | 2024-05-15 A | 2024-05-21 A | 100% |  |  | Lorena | 40h | 40h |  |
| 143 | 1.15.3 | **La ventana de servicios cuenta con una casilla que registra y/o reporta que el problema identificado es por causa de alguna incidencia.** |  | 28d | 2024-04-24 A | 2024-06-02 | 92% | 2.17d | 0d | Lorena | 469.87h | 368.68h |  |
| 144 | 1.15.3.1 | Desarollar funcionalidad en React | manual | 19d | 2024-04-24 A | 2024-05-18 A | 100% |  |  | Lorena | 152h | 152h |  |
| 145 | 1.15.3.2 | Actualizar la BD para registrar la nueva información sobre las incidencias marcadas por los agentes. | manual | 12d | 2024-05-19 A | 2024-06-02 | 80% | 2.4d |  | Lorena | 96h | 76.8h |  |
| 146 | 1.16 | **El sistema del supervisor tendrá una ventana en donde podrá visualizar en un formato de tarjetas de colores, el estado actual de las llamadas que están haciendo sus agentes. Cada tarjeta tendrá la siguiente información: nombre del agente, tiempo de la lla** |  | 28d | 2024-04-24 A | 2024-06-01 | 99% | 0d | 0d | Alfredo | 1968h | 1417.6h | RS-06 |
| 147 | 1.16.1 | **El supervisor podrá visualizar a todos sus agentes.** |  | 28d | 2024-04-24 A | 2024-06-01 | 99% | 0d | 0d | Alfredo | 488h | 393.6h |  |
| 148 | 1.16.1.1 | Se diseñará y creará la pantalla en React (FrontEnd) donde se podrá visualizar la información de los agentes del Call Center en forma de tarjetas. (2 días) | manual | 29d | 2024-04-24 A | 2024-06-01 A | 100% |  |  | Alfredo | 232h | 232h |  |
| 149 | 1.16.1.2 | Con el BackEnd, se realizan consultas a la Base de Datos para obtener la información de los agentes y presentarla en las tarjetas del FrontEnd. (2 días) | manual | 4d | 2024-05-20 A | 2024-05-23 A | 100% |  |  | Alfredo | 32h | 32h |  |
| 150 | 1.16.2 | **El supervisor podrá visualizar el estado actual de las llamadas que llevan sus agentes.** |  | 13d | 2024-05-15 A | 2024-06-01 | 99% | 0d | 0d | Alfredo | 312h | 216h |  |
| 151 | 1.16.2.1 | Se define una gama de colores para la representación de los estados de una llamada. (1 día) | manual | 1d | 2024-05-15 A | 2024-05-15 A | 100% |  |  | Alfredo | 8h | 8h |  |
| 152 | 1.16.2.2 | Se obtiene el estado de la llamada que tiene un agente mediante Amazon Connect. (2 días) | manual | 3d | 2024-05-20 A | 2024-05-22 A | 100% |  |  | Alfredo | 24h | 24h |  |
| 153 | 1.16.2.3 | El BackEnd obtiene la información del estado de la llamada y lo manda al FrontEnd. (2 días) | manual | 11d | 2024-05-20 A | 2024-06-01 A | 100% |  |  | Alfredo | 88h | 88h |  |
| 154 | 1.16.2.4 | Con el estado de la llamada el FrontEnd actualiza el color de la tarjeta indicando el estado. (1 día) | manual | 11d | 2024-05-20 A | 2024-06-01 A | 100% |  |  | Alfredo | 88h | 88h |  |
| 155 | 1.16.3 | **El supervisor podrá visualizar información básica dentro de las tarjetas de cada agente.** |  | 23d | 2024-05-01 A | 2024-05-31 | 99% | 0d | 0d | Alfredo | 424h | 344h |  |
| 156 | 1.16.3.1 | La Base de Datos guarda información sobre los agentes y sus actividades. (1 día) | manual | 14d | 2024-05-01 A | 2024-05-18 A | 100% |  |  | Alfredo | 112h | 112h |  |
| 157 | 1.16.3.2 | El BackEnd realiza una consulta para extraer información sobre cada agente que se encuentre activo en el Call Center. (1 día) | manual | 15d | 2024-05-10 A | 2024-05-30 A | 100% |  |  | Alfredo | 120h | 120h |  |
| 158 | 1.16.3.3 | El FrontEnd recibe la información de cada agente y la pone en una tarjeta (dentro de la interfaz ya diseñada). (1 día) | manual | 1d | 2024-05-31 A | 2024-05-31 A | 100% |  |  | Alfredo | 8h | 8h |  |

| ID | WBS | Task | Type | Duration | Start | Finish | Complete | Remaining | Total slack | Resources | Work | Actual work | In Charge |
| --- | --- | --- | --- | --- | --- | --- | --- | --- | --- | --- | --- | --- | --- |
| 159 | 1.16.4 | **El supervisor podrá visualizar el color de la tarjeta respecto al cambio de emociones que tiene un cliente en el transcurso de la llamada.** |  | 6d | 2024-05-22 A | 2024-05-29 A | 100% |  |  | Alfredo | 144h | 144h |  |
| 160 | 1.16.4.1 | Cuando se presente una llamada, se obtendrán las emociones del cliente mediante Amazon Connect y se enviarán al BackEnd. (1 día) | manual | 6d | 2024-05-22 A | 2024-05-29 A | 100% |  |  | Alfredo | 48h | 48h |  |
| 161 | 1.16.4.2 | El BackEnd se encarga de recibir el dato y lo presenta en el velocímetro del FrontEnd. (1 día) | manual | 6d | 2024-05-22 A | 2024-05-29 A | 100% |  |  | Alfredo | 48h | 48h |  |
| 162 | 1.16.5 | **El supervisor contará con un botón para intervenir en la llamada del agente.** |  | 23d | 2024-05-01 A | 2024-05-31 | 99% | 0d | 0d | Alfredo | 376h | 192h |  |
| 163 | 1.16.5.1 | En cada tarjeta de los agentes, se diseña e implementa un botón el cual representa la acción de intervenir una llamada. (1 día) | manual | 22d | 2024-05-01 A | 2024-05-30 A | 100% |  |  | Alfredo | 176h | 176h |  |
| 164 | 1.16.5.2 | Cuando se da click a este botón, el BackEnd manda esta petición a Amazon Connect para realizar la intervención de la llamada. (2 días) | manual | 2d | 2024-05-30 A | 2024-05-31 A | 100% |  |  | Alfredo | 16h | 16h |  |
| 165 | 1.17 | **Cuando se le de click a cualquiera de las tarjetas dentro de la ventana de visualización de agentes en llamada, se mostrarán detalles puntuales de la llamada en curso como: el nombre del cliente, el problema presentado, el velocímetro de emoción durante l** |  | 13d | 2024-05-01 A | 2024-05-17 A | 100% |  |  | Bernardo | 440h | 440h | RS-08 |
| 166 | 1.17.1 | **El sistema está conectado a la base de datos** |  | 13d | 2024-05-01 A | 2024-05-17 A | 100% |  |  | Bernardo | 304h | 304h |  |
| 167 | 1.17.1.1 | Diseñar la base de datos, cerciorándose de mantener los datos más útiles (2 días) | manual | 13d | 2024-05-01 A | 2024-05-17 A | 100% |  |  | Bernardo | 104h | 104h |  |
| 168 | 1.17.1.2 | Montar un servidor donde entrará la base de datos (2-3 días) | manual | 1d | 2024-05-01 A | 2024-05-01 A | 100% |  |  | Bernardo | 8h | 8h |  |
| 169 | 1.17.1.3 | Generar llamadas de api (1-2 días) | manual | 5d | 2024-05-06 A | 2024-05-10 A | 100% |  |  | Bernardo | 40h | 40h |  |
| 170 | 1.17.1.4 | Cerciorarse que las llamadas de api son recibidas por un medio como Postman (2 horas) | manual | 5d | 2024-05-06 A | 2024-05-10 A | 100% |  |  | Bernardo | 40h | 40h |  |
| 171 | 1.17.1.5 | Insertar dichas llamadas al sistema (1 hora) | manual | 1d | 2024-05-15 A | 2024-05-15 A | 100% |  |  | Bernardo | 8h | 8h |  |
| 172 | 1.17.2 | **El diseño del sistema tiene todas las áreas donde pueda existir información relevante** |  | 3d | 2024-05-01 A | 2024-05-03 A | 100% |  |  | Bernardo | 32h | 32h |  |
| 173 | 1.17.2.1 | Se crea un mockup del sistema (1 día) | manual | 1d | 2024-05-01 A | 2024-05-01 A | 100% |  |  | Bernardo | 8h | 8h |  |
| 174 | 1.18 | **El sistema del superior tendrá una ventana de estadísticas donde podrá visualizar el tiempo promedio de cada llamada, el promedio de las emociones por llamada, el tiempo productivo del Call Center, porcentaje de llamadas en tiempo ideal.** |  | 28d | 2024-04-24 A | 2024-06-01 | 99% | 0d | 0d | José Antonio | 712h | 640h | RS-09 |
| 175 | 1.18.1 | **Obtener el tiempo promedio de cada llamada, el promedio de las emociones por llamada, el tiempo productivo del Call Center, porcentaje de llamadas en tiempo ideal desde la base de datos** |  | 18d | 2024-05-08 A | 2024-06-01 | 99% | 0d | 0d | José Antonio | 240h | 208h |  |
| 176 | 1.18.1.1 | Establecer una conexión segura con la base de datos que almacena los registros del call center, incluyendo detalles de las llamadas y métricas asociadas. -2 | manual | 9d | 2024-05-08 A | 2024-05-20 A | 100% |  |  | José Antonio | 72h | 72h |  |
| 177 | 1.18.1.2 | Generar rutas para las estadisticas | manual | 8d | 2024-05-23 A | 2024-06-01 A | 100% |  |  | José Antonio | 64h | 64h |  |
| 178 | 1.18.2 | **Mostrar en el componente los resultados** |  | 18d | 2024-04-24 A | 2024-05-17 A | 100% |  |  | José Antonio | 288h | 288h |  |
| 179 | 1.18.2.1 | Desarrollar o integrar un componente de interfaz de usuario (UI) en el sistema del supervisor que muestre claramente las estadísticas obtenidas. Esto podría ser un dashboard con gráficos y tablas. - 2 | manual | 18d | 2024-04-24 A | 2024-05-17 A | 100% |  |  | José Antonio | 144h | 144h |  |
| 180 | 1.19 | **El sistema del supervisor tendrá una ventana de validación de incidencias en la cual él podrá visualizar las incidencias reportadas por sus agentes y otra sección en donde podrá redactar un SMS informando de la situación a los clientes que se vean afectad** |  | 29d | 2024-04-24 A | 2024-06-03 A | 100% |  |  | Eric | 1256h | 1256h | RS-10 |
| 181 | 1.19.1 | **En la pantalla del supervisor les aparecerán todas las incidencias que aparecen en la base de datos que le llegan de los agentes.** |  | 18d | 2024-04-24 A | 2024-05-17 A | 100% |  |  | Eric | 416h | 416h |  |
| 182 | 1.19.1.1 | Desarrollo de interfaz en el sistema del supervisor (Front - End) | manual | 18d | 2024-04-24 A | 2024-05-17 A | 100% |  |  | Eric | 144h | 144h |  |
| 183 | 1.19.1.2 | Creación de instancia RBD. | manual | 3d | 2024-05-01 A | 2024-05-03 A | 100% |  |  | Eric | 24h | 24h |  |
| 184 | 1.19.1.3 | Creación de la BD en el back End | manual | 4d | 2024-05-01 A | 2024-05-06 A | 100% |  |  | Eric | 32h | 32h |  |
| 185 | 1.19.1.4 | Conexión de la BD entre el front y el back. | manual | 3d | 2024-05-15 A | 2024-05-17 A | 100% |  |  | Eric | 24h | 24h |  |
| 186 | 1.19.1.5 | Creación del query que llame a todas las incidencias de la BD. | manual | 3d | 2024-05-15 A | 2024-05-17 A | 100% |  |  | Eric | 24h | 24h |  |
| 187 | 1.19.1.6 | Mostrar en el front los resultados | manual | 3d | 2024-05-15 A | 2024-05-17 A | 100% |  |  | Eric | 24h | 24h |  |

| ID | WBS | Task | Type | Duration | Start | Finish | Complete | Remaining | Total slack | Resources | Work | Actual work | In Charge |
| --- | --- | --- | --- | --- | --- | --- | --- | --- | --- | --- | --- | --- | --- |
| 188 | 1.19.2 | **El supervisor podrá seleccionar cualquier incidencia y dar validez con un botón, esto representará que esas incidencias merecen enviar un mensaje.** |  | 5d | 2024-05-15 A | 2024-05-21 A | 100% |  |  | Eric | 120h | 120h |  |
| 189 | 1.19.2.1 | Funcionalidad de dar click o una checkbox en la incidencia. | manual | 5d | 2024-05-15 A | 2024-05-21 A | 100% |  |  | Eric | 40h | 40h |  |
| 190 | 1.19.2.2 | Dar botón de verificación y mandar esa incidencia en la BD de incidencias validadas. | manual | 5d | 2024-05-15 A | 2024-05-21 A | 100% |  |  | Eric | 40h | 40h |  |
| 191 | 1.19.3 | **El supervisor verá otra pestaña donde le aparecerán todas las incidencias validadas y podrá mandar un mensaje que le llegarán a todas las personas.** |  | 29d | 2024-04-24 A | 2024-06-03 A | 100% |  |  | Eric | 488h | 488h |  |
| 192 | 1.19.3.1 | Desarrollo de interfaz en el sistema del supervisor (Front - End) | manual | 18d | 2024-04-24 A | 2024-05-17 A | 100% |  |  | Eric | 144h | 144h |  |
| 193 | 1.19.3.2 | Conexión de la BD entre el front y el back. | manual | 3d | 2024-05-18 A | 2024-05-21 A | 100% |  |  | Eric | 24h | 24h |  |
| 194 | 1.19.3.3 | Creación del query que llame a todas las incidencias de la BD. | manual | 3d | 2024-05-18 A | 2024-05-21 A | 100% |  |  | Eric | 24h | 24h |  |
| 195 | 1.19.3.4 | Mostrar los resultados en el front. | manual | 2d | 2024-05-21 A | 2024-05-22 A | 100% |  |  | Eric | 16h | 16h |  |
| 196 | 1.19.3.5 | Funcionalidad del botón que mande lo que está escrito en ese momento en el texto a Amazon Connect. | manual | 3d | 2024-05-30 A | 2024-06-03 A | 100% |  |  | Eric | 24h | 24h |  |
| 197 | 1.19.3.6 | Connect recibe la información y llama a todas las personas que se encontraron del query. | manual | 3d | 2024-05-30 A | 2024-06-03 A | 100% |  |  | Eric | 24h | 24h |  |
| 198 | 1.20 | **El sistema del supervisor tendrá una ventana de notificaciones donde se mostrarán distintas recomendaciones proporcionadas por el sistema y por cada una de estas existirá la opción de aceptar o rechazar los cambios propuestos por dichas sugerencias.** |  | 23d | 2024-05-01 A | 2024-06-01 | 99% | 0d | 0d | Eric | 1324h | 884h | RST-05 |
| 199 | 1.20.1 | **La interfaz está completa** |  | 12d | 2024-05-16 A | 2024-06-01 A | 100% |  |  | Eric | 124h | 124h |  |
| 200 | 1.20.1.1 | Se monta el sistema. (3-4 días) | manual | 12.7d | 2024-05-16 A | 2024-06-01 A | 100% |  |  | Eric | 109.6h | 109.6h |  |
| 201 | 1.20.2 | **Milestone: El sistema está conectado a la base de datos** |  | 23d | 2024-05-01 A | 2024-06-01 | 99% | 0d | 0d | Eric | 504h | 384h |  |
| 202 | 1.20.2.1 | Se monta la BD. | manual | 3d | 2024-05-01 A | 2024-05-03 A | 100% |  |  | Eric | 24h | 24h |  |
| 203 | 1.20.2.2 | Generar llamadas de api (1-2 días) | manual | 21d | 2024-05-06 A | 2024-06-01 A | 100% |  |  | Eric | 168h | 168h |  |
| 204 | 1.20.2.3 | Cerciorarse que las llamadas de api son recibidas por un medio como Postman (2 horas) | manual | 14d | 2024-05-15 A | 2024-06-01 A | 100% |  |  | Eric | 112h | 112h |  |
| 205 | 1.20.2.4 | Insertar dichas llamadas al sistema (1 hora) | manual | 7d | 2024-05-25 A | 2024-06-01 A | 100% |  |  | Eric | 56h | 56h |  |
| 206 | 1.20.3 | **Milestone: El sistema puede recibir notificaciones artificiales a través de la base de datos** |  | 23d | 2024-05-01 A | 2024-06-01 | 99% | 0d | 0d | Eric | 512h | 352h |  |
| 207 | 1.20.3.1 | Diseñar la base de datos, cerciorándose de mantener los datos más útiles (2 días) | manual | 3d | 2024-05-01 A | 2024-05-03 A | 100% |  |  | Eric | 24h | 24h |  |
| 208 | 1.20.3.2 | Montar un servidor donde entrará la base de datos (2-3 días) | manual | 3d | 2024-05-06 A | 2024-05-08 A | 100% |  |  | Eric | 24h | 24h |  |
| 209 | 1.20.3.3 | Generar las llamadas de la api y conectarlo al sistema (1-2 días) | manual | 21d | 2024-05-06 A | 2024-06-01 A | 100% |  |  | Eric | 168h | 168h |  |
| 210 | 1.20.3.4 | Crear notificaciones por medio de la base de datos (2 horas) | manual | 7d | 2024-05-24 A | 2024-06-01 A | 100% |  |  | Eric | 56h | 56h |  |
| 211 | 1.20.3.5 | Insertar las llamadas al sistema cerciorándose que el supervisor pueda verlas (3 horas) | manual | 7d | 2024-05-25 A | 2024-06-01 A | 100% |  |  | Eric | 56h | 56h |  |

| ID | WBS | Task | Type | Duration | Start | Finish | Complete | Remaining | Total slack | Resources | Work | Actual work | In Charge |
| --- | --- | --- | --- | --- | --- | --- | --- | --- | --- | --- | --- | --- | --- |
| 212 | 1.21 | **El sistema notificará cuando un agente pida auxilio además de que la tarjeta automáticamente se pondrá de color rojo y se colocará al inicio de su respectiva ventana.** |  | 25d | 2024-04-28 A | 2024-06-02 | 99% | 0d | 0d | José Antonio | 808h | 704.83h | RSA-02 |
| 213 | 1.21.1 | **Milestone: El sistema de agente puede enviar llamados de auxilio al supervisor** |  | 25d | 2024-04-28 A | 2024-06-02 | 99% | 0d | 0d | José Antonio | 480h | 444.27h |  |
| 214 | 1.21.1.1 | Montar un servidor donde entrará la base de datos (2-3 días) | manual | 1d | 2024-05-01 A | 2024-05-01 A | 100% |  |  | José Antonio | 8h | 8h |  |
| 215 | 1.21.1.2 | Generar llamadas de api (1-2 días) | manual | 1d | 2024-05-25 A | 2024-05-25 A | 100% |  |  | José Antonio | 8h | 8h |  |
| 216 | 1.21.1.3 | Cerciorarse que las llamadas de api son recibidas por un medio como Postman (2 horas) | manual | 1d | 2024-05-24 A | 2024-05-24 A | 100% |  |  | José Antonio | 8h | 8h |  |
| 217 | 1.21.1.4 | Insertar dichas llamadas al sistema (1 hora) | manual | 1d | 2024-05-24 A | 2024-05-24 A | 100% |  |  | José Antonio | 8h | 8h |  |
| 218 | 1.21.1.5 | Generar las llamadasde la api y conectarlo al sistema (1-2 días) | manual | 2d | 2024-05-25 A | 2024-05-27 A | 100% |  |  | José Antonio | 16h | 16h |  |
| 219 | 1.21.1.6 | Dicho sistema, se une a la base de datos, para ser representado. (1 día) | manual | 27d | 2024-04-28 A | 2024-06-02 A | 100% |  |  | José Antonio | 216h | 216h |  |
| 220 | 1.21.1.7 | El sistema puede mostrar la información de la base de datos (2 días) | manual | 2d | 2024-04-28 A | 2024-04-29 A | 100% |  |  | José Antonio | 16h | 16h |  |
| 221 | 1.21.2 | **Milestone: Cuando se hacen llamados de auxilio, el sistema de supervisor ve dicho agente marcado de color rojo** |  | 7d | 2024-05-23 A | 2024-06-02 | 99% | 0d | 0d | José Antonio | 128h | 114.35h |  |
| 222 | 1.21.2.1 | Se crea comunicación entre sistema de agente a supervisor, por medio de llamadas de api (1-2 días) | manual | 5d | 2024-05-23 A | 2024-05-29 A | 100% |  |  | José Antonio | 40h | 40h |  |
| 223 | 1.21.2.2 | Cuando se recibe la llamada, mostrarla en el sistema del supervisor (1 día) | manual | 6d | 2024-05-23 A | 2024-05-30 A | 100% |  |  | José Antonio | 48h | 48h |  |
| 224 | 1.21.2.3 | Modificar el sistema de agente para que este cambie forzosamente al enviar un auxilio (2 horas) | manual | 2d | 2024-05-31 A | 2024-06-02 A | 100% |  |  | José Antonio | 16h | 16h |  |
| 225 | 1.22 | **El sistema notificará cuando la media en el tiempo de llamada exceda el tiempo ideal de llamada (1 minuto).** |  | 28d | 2024-04-24 A | 2024-06-02 | 99% | 0d | 0d | Alfredo | 1520h | 1233.02h | RST-06 |
| 226 | 1.22.1 | **El sistema mostrará una notificación cuando la media supere un minuto.** |  | 28d | 2024-04-24 A | 2024-06-01 | 99% | 0d | 0d | Alfredo | 464h | 407.42h |  |
| 227 | 1.22.1.1 | Desarrollo de interfaz en el sistema del supervisor (Front - End) | manual | 18d | 2024-04-24 A | 2024-05-17 A | 100% |  |  | Alfredo | 144h | 144h |  |
| 228 | 1.22.1.2 | Diseño de alerta de Front. | manual | 3d | 2024-05-15 A | 2024-05-17 A | 100% |  |  | Alfredo | 24h | 24h |  |
| 229 | 1.22.1.3 | Mostrar en la pantalla de recomendaciones todas las alertas. | manual | 9d | 2024-05-22 A | 2024-06-01 A | 100% |  |  | Alfredo | 72h | 72h |  |
| 230 | 1.22.2 | **En la notificación se le dará click y verá las recomendaciones.** |  | 28d | 2024-04-24 A | 2024-06-02 | 99% | 0d | 0d | Alfredo | 648h | 548h |  |
| 231 | 1.22.2.1 | Desarrollo de interfaz en el sistema del supervisor (Front - End) | manual | 29d | 2024-04-24 A | 2024-06-02 A | 100% |  |  | Alfredo | 232h | 232h |  |
| 232 | 1.22.2.2 | Conexión con la BD | manual | 24d | 2024-05-01 A | 2024-06-02 A | 100% |  |  | Alfredo | 192h | 192h |  |
| 233 | 1.22.3 | **Si da click en ejecutar alguna recomendación el sistema ejecutará esa recomendación automáticamente.** |  | 8d | 2024-05-22 A | 2024-06-01 | 99% | 0d | 0d | Alfredo | 184h | 153.6h |  |
| 234 | 1.22.3.1 | Diseñar el back las respuestas de las recomendaciones | manual | 9d | 2024-05-22 A | 2024-06-01 A | 100% |  |  | Alfredo | 72h | 72h |  |
| 235 | 1.22.3.2 | Conectar con el API del back | manual | 6d | 2024-05-27 A | 2024-06-01 A | 100% |  |  | Alfredo | 48h | 48h |  |

| ID | WBS | Task | Type | Duration | Start | Finish | Complete | Remaining | Total slack | Resources | Work | Actual work |
| --- | --- | --- | --- | --- | --- | --- | --- | --- | --- | --- | --- | --- |
| 236 | 1.23 | **El sistema notificará cuando hay muchos agentes inactivos.** |  | 15d | 2024-05-15 A | 2024-06-04 | 99% | 0d | 0d | Alfredo | 224h | 107.2h |
| 237 | 1.23.1 | **El sistema del Supervisor proporciona un apartado para la visualización de notificaciones** |  | 3d | 2024-05-15 A | 2024-05-17 A | 100% |  |  | Alfredo | 48h | 48h |
| 238 | 1.23.1.1 | Se le da formato a la aparición de las notificaciones dentro de la pantalla del Supervisor. (1 día) | manual | 3d | 2024-05-15 A | 2024-05-17 A | 100% |  |  | Alfredo | 24h | 24h |
| 239 | 1.23.2 | **Se lanzará una notificación para avisar sobre el número alto de agentes inactivos.** |  | 3d | 2024-05-31 A | 2024-06-04 | 99% | 0d | 0d | Alfredo | 56h | 35.2h |
| 240 | 1.23.2.1 | En el FrontEnd se tiene un contador de inactividad, que se iniciará cuando el agente no esté en llamada y no esté realizando alguna actividad relacionada al seguimiento del problema delcliente. (2 días) | manual | 2d | 2024-05-31 A | 2024-06-01 A | 100% |  |  | Alfredo | 16h | 16h |
| 241 | 1.23.2.2 | Cuando el contador llegue al tiempo establecido (2 min) se lanzará una alerta. (1 día) | manual | 1d | 2024-06-04 A | 2024-06-04 A | 100% |  |  | Alfredo | 8h | 8h |
| 242 | 1.23.2.3 | Se presenta está alerta en el apartado de notificaciones. (1 día) | manual | 1d | 2024-06-04 A | 2024-06-04 A | 100% |  |  | Alfredo | 8h | 8h |
| 243 | 2 | **Video** |  | 2d | 2024-06-01 A | 2024-06-04 A | 100% |  |  | Héctor | 48h | 48h |
| 244 | 2.1 | Guión del video hecho | manual | 1d | 2024-06-01 A | 2024-06-01 A | 100% |  |  | Héctor | 8h | 8h |
| 245 | 2.2 | Grabación del video | manual | 2d | 2024-06-03 A | 2024-06-04 A | 100% |  |  | Héctor | 16h | 16h |
| 246 | 2.3 | Video Editado | manual | 1d | 2024-06-04 A | 2024-06-04 A | 100% |  |  | Héctor | 8h | 8h |
| 247 | 3 | **Presentación** |  | 12d | 2024-05-20 A | 2024-06-04 A | 100% |  |  | Kari | 312h | 312h |
| 248 | 3.1 | Elección Plantilla | manual | 1d | 2024-05-20 A | 2024-05-20 A | 100% |  |  | Kari | 8h | 8h |
| 249 | 3.2 | Elección diapositiva | manual | 6d | 2024-05-20 A | 2024-05-27 A | 100% |  |  | Kari | 48h | 48h |
| 250 | 3.3 | Llenado diapositiva | manual | 12d | 2024-05-20 A | 2024-06-04 A | 100% |  |  | Kari | 96h | 96h |
| 251 | 3.4 | Revisión diapositiva | manual | 6d | 2024-05-28 A | 2024-06-04 A | 100% |  |  | Kari | 48h | 48h |
| 252 | 3.5 | Correciones | manual | 2d | 2024-06-01 A | 2024-06-03 A | 100% |  |  | Kari | 16h | 16h |
| 253 | 4 | **Simulación** |  | 8d | 2024-05-24 A | 2024-06-04 A | 100% |  |  | Eric | 128h | 128h |
| 254 | 4.1 | Planeación de la simulación | manual | 2d | 2024-05-24 A | 2024-05-26 A | 100% |  |  | Eric | 16h | 16h |
| 255 | 4.2 | Previo de la simulación | manual | 1d | 2024-06-03 A | 2024-06-03 A | 100% |  |  | Eric | 8h | 8h |
| 256 | 4.3 | Correcciones | manual | 5d | 2024-05-29 A | 2024-06-04 A | 100% |  |  | Eric | 40h | 40h |
